# Projecttt

Schedule from MS Project, 2026-03-25 to 2026-05-25, costs in S, A marks actual dates.

## Calendars

- Estándar: Mon-Fri 09:00-13:00, 15:00-19:00; Sat-Sun off.

## Resources

| Resource | Group | Rate |
| --- | --- | --- |
| Javier | Desarrollador / Jefe de Proyecto | 40 |
| Daniel | Diseño UI/UX | 30 |
| Manuel | Backend y Base de Datos | 30 |

## Schedule

| ID | WBS | Task | Type | Duration | Start | Finish | Predecessors | Complete | Remaining | Total slack | Constraint | Resources | Work | Actual work | Cost | Actual cost |
| --- | --- | --- | --- | --- | --- | --- | --- | --- | --- | --- | --- | --- | --- | --- | --- | --- |
| 1 | 1 | **Diseño de una plataforma web: EcoWaste** |  | 43d | 2026-03-25 A | 2026-05-25 |  | 99% | 0d | 0d |  |  | 296h | 296h | 10,000 | 10,000 |
| 2 | 1.1 | **FASE 1: INICIACIÓN** |  | 2d | 2026-03-25 A | 2026-03-26 A |  | 100% |  |  |  |  | 16h | 16h | 640 | 640 |
| 3 | 1.1.1 | Realización del alcance |  | 1d | 2026-03-25 A | 2026-03-25 A |  | 100% |  |  |  | Javier | 8h | 8h | 320 | 320 |
| 4 | 1.1.2 | Realización de objetivos |  | 1d | 2026-03-26 A | 2026-03-26 A | 3 | 100% |  |  |  | Javier | 8h | 8h | 320 | 320 |
| 5 | 1.2 | **FASE 2: PLANIFICACIÓN** |  | 6d | 2026-03-26 A | 2026-04-02 A |  | 100% |  |  |  |  | 48h | 48h | 1,440 | 1,440 |
| 6 | 1.2.1 | Definición de los requisitos |  | 1d | 2026-03-26 A | 2026-03-26 A | 3 | 100% |  |  |  | Daniel | 8h | 8h | 240 | 240 |
| 7 | 1.2.2 | Diseño de interfaz de usuario |  | 1d | 2026-03-27 A | 2026-03-27 A | 6 | 100% |  |  |  | Daniel | 8h | 8h | 240 | 240 |
| 8 | 1.2.3 | Diseño de experiencia de usuario |  | 1d | 2026-03-30 A | 2026-03-30 A | 7 | 100% |  |  |  | Daniel | 8h | 8h | 240 | 240 |
| 9 | 1.2.4 | Realización del cronograma |  | 1d | 2026-03-31 A | 2026-03-31 A | 8 | 100% |  |  |  | Daniel | 8h | 8h | 240 | 240 |
| 10 | 1.2.5 | Asignación de funcionalidades del equipo |  | 1d | 2026-04-01 A | 2026-04-01 A | 9 | 100% |  |  |  | Daniel | 8h | 8h | 240 | 240 |
| 11 | 1.2.6 | Realización del presupuesto |  | 1d | 2026-04-02 A | 2026-04-02 A | 10 | 100% |  |  |  | Daniel | 8h | 8h | 240 | 240 |
| 12 | 1.3 | **FASE 3: GESTIÓN DE REQUISITOS** |  | 7d | 2026-04-13 A | 2026-04-21 A |  | 100% |  |  |  |  | 56h | 56h | 1,680 | 1,680 |
| 13 | 1.3.1 | Gestión de requerimientos |  | 4d | 2026-04-13 A | 2026-04-16 A | 21 | 100% |  |  |  | Manuel | 32h | 32h | 960 | 960 |
| 14 | 1.3.2 | Requerimientos funcionales y no funcionales |  | 1d | 2026-04-17 A | 2026-04-17 A | 13 | 100% |  |  |  | Manuel | 8h | 8h | 240 | 240 |
| 15 | 1.3.3 | Solicitud de cambio de requerimientos |  | 1d | 2026-04-20 A | 2026-04-20 A | 14 | 100% |  |  |  | Manuel | 8h | 8h | 240 | 240 |
| 16 | 1.3.4 | Validación de requerimientos |  | 1d | 2026-04-21 A | 2026-04-21 A | 15 | 100% |  |  |  | Manuel | 8h | 8h | 240 | 240 |
| 17 | 1.4 | **FASE 4: SEGUIMIENTO Y CONTROL DEL PROYECTO** |  | 6d | 2026-04-03 A | 2026-04-10 A |  | 100% |  |  |  |  | 48h | 48h | 1,920 | 1,920 |
| 18 | 1.4.1 | Reportes del estado actual del proyecto |  | 2d | 2026-04-03 A | 2026-04-06 A | 11 | 100% |  |  |  | Javier | 16h | 16h | 640 | 640 |
| 19 | 1.4.2 | Registro y seguimiento de problemas y registros |  | 2d | 2026-04-07 A | 2026-04-08 A | 18 | 100% |  |  |  | Javier | 16h | 16h | 640 | 640 |
| 20 | 1.4.3 | Desarrollo de actas y seguimiento de acciones pendientes |  | 1d | 2026-04-09 A | 2026-04-09 A | 19 | 100% |  |  |  | Javier | 8h | 8h | 320 | 320 |
| 21 | 1.4.4 | Registros de cambios al proyecto |  | 1d | 2026-04-10 A | 2026-04-10 A | 20 | 100% |  |  |  | Javier | 8h | 8h | 320 | 320 |
| 22 | 1.5 | HITO 1: Presentación APF1 | milestone | 0d | 2026-04-22 | 2026-04-22 |  |  |  | 16d | start no earlier than 2026-04-22 | Javier; Manuel; Daniel |  |  |  |  |
| 23 | 1.6 | **FASO5: GESTIÓN Y ACUERDOS CON PROVEEDORES** |  | 4d | 2026-04-22 A | 2026-04-27 A |  | 100% |  |  |  |  | 32h | 32h | 1,040 | 1,040 |
| 24 | 1.6.1 | Clasificación de las adquisiciones |  | 1d | 2026-04-22 A | 2026-04-22 A | 22 | 100% |  |  |  | Daniel | 8h | 8h | 240 | 240 |
| 25 | 1.6.2 | Evaluación de las adquisiciones |  | 1d | 2026-04-23 A | 2026-04-23 A | 24 | 100% |  |  |  | Javier | 8h | 8h | 320 | 320 |
| 26 | 1.6.3 | Elaboración de contrato |  | 1d | 2026-04-24 A | 2026-04-24 A | 25 | 100% |  |  |  | Manuel | 8h | 8h | 240 | 240 |
| 27 | 1.6.4 | Informe del estado de las adquisiciones |  | 1d | 2026-04-27 A | 2026-04-27 A | 26 | 100% |  |  |  | Daniel | 8h | 8h | 240 | 240 |

| ID | WBS | Task | Type | Duration | Start | Finish | Predecessors | Complete | Total slack | Constraint | Resources | Work | Actual work | Cost | Actual cost |
| --- | --- | --- | --- | --- | --- | --- | --- | --- | --- | --- | --- | --- | --- | --- | --- |
| 28 | 1.7 | **FASE 6: MEDICIÓN Y ANÁLISIS** |  | 3d | 2026-04-28 A | 2026-04-30 A |  | 100% |  |  |  | 24h | 24h | 800 | 800 |
| 29 | 1.7.1 | Procesos de medición y análisis |  | 1d | 2026-04-28 A | 2026-04-28 A | 27 | 100% |  |  | Daniel | 8h | 8h | 240 | 240 |
| 30 | 1.7.2 | Elaboración de métricas del proyecto |  | 1d | 2026-04-29 A | 2026-04-29 A | 29 | 100% |  |  | Javier | 8h | 8h | 320 | 320 |
| 31 | 1.7.3 | Realización del registro de mediciones |  | 1d | 2026-04-30 A | 2026-04-30 A | 30 | 100% |  |  | Manuel | 8h | 8h | 240 | 240 |
| 32 | 1.8 | **FASE 7: GESTIÓN DE PROCESOS DE CALIDAD Y PRODUCTOS** |  | 4d | 2026-05-01 A | 2026-05-06 A |  | 100% |  |  |  | 32h | 32h | 1,120 | 1,120 |
| 33 | 1.8.1 | Designación del equipo de QA |  | 1d | 2026-05-01 A | 2026-05-01 A | 31 | 100% |  |  | Javier | 8h | 8h | 320 | 320 |
| 34 | 1.8.2 | Establecimiento de proceso de QA |  | 1d | 2026-05-04 A | 2026-05-04 A | 33 | 100% |  |  | Javier | 8h | 8h | 320 | 320 |
| 35 | 1.8.3 | Realización del registro de no conformidades de QA (Checklist) |  | 1d | 2026-05-05 A | 2026-05-05 A | 34 | 100% |  |  | Daniel | 8h | 8h | 240 | 240 |
| 36 | 1.8.4 | Elaboración del informe de seguimiento a las revisiones de QA |  | 1d | 2026-05-06 A | 2026-05-06 A | 35 | 100% |  |  | Manuel | 8h | 8h | 240 | 240 |
| 37 | 1.9 | **FASE 8: GESTIÓN DE LA CONFIGURACIÓN DEL PROYECTO** |  | 5d | 2026-05-07 A | 2026-05-13 A |  | 100% |  |  |  | 40h | 40h | 1,360 | 1,360 |
| 38 | 1.9.1 | Proceso de gestión de la configuración |  | 1d | 2026-05-07 A | 2026-05-07 A | 36 | 100% |  |  | Daniel | 8h | 8h | 240 | 240 |
| 39 | 1.9.2 | Plan de gestión de configuración |  | 1d | 2026-05-08 A | 2026-05-08 A | 38 | 100% |  |  | Daniel | 8h | 8h | 240 | 240 |
| 40 | 1.9.3 | Entorno de gestión de la configuración |  | 1d | 2026-05-11 A | 2026-05-11 A | 39 | 100% |  |  | Manuel | 8h | 8h | 240 | 240 |
| 41 | 1.9.4 | Repositorio de información del proyecto |  | 1d | 2026-05-12 A | 2026-05-12 A | 40 | 100% |  |  | Javier | 8h | 8h | 320 | 320 |
| 42 | 1.9.5 | Registro de seguimiento |  | 1d | 2026-05-13 A | 2026-05-13 A | 41 | 100% |  |  | Javier | 8h | 8h | 320 | 320 |
| 43 | 1.10 | HITO 2: Presentación APF2 | milestone | 0d | 2026-05-25 | 2026-05-25 |  |  | 0d | start no earlier than 2026-05-25 | Daniel; Javier; Manuel |  |  |  |  |
